# ProjetEcommerce

Schedule from MS Project, 2014-09-15 to 2015-01-15, 7 hours a day, A marks actual dates.

## Calendars

- Standard: Mon 09:00-13:00; Tue-Wed off; Thu 09:00-13:00; Fri-Sun off.

## Resources

| Resource |
| --- |
| Francis |
| Mathew |
| Marc |

## Schedule

| ID | WBS | Task | Duration | Start | Finish | Predecessors | Complete | Remaining | Actual start | Total slack | Free slack | Constraint | Resources | Work | Actual work |
| --- | --- | --- | --- | --- | --- | --- | --- | --- | --- | --- | --- | --- | --- | --- | --- |
| 1 | 1 | **Analyse** | 5.86d | 2014-09-15 09:00 | 2014-10-13 18:00 |  | 96% | 0.24d | 2014-09-18 09:00 |  |  |  |  | 60h | 57.5h |
| 2 | 1.1 | Type de site (Enchere-Vente | 4h | 2014-09-18 09:00 A | 2014-09-18 13:00 A |  | 100% |  |  |  |  |  | Francis; Marc; Mathew | 12h | 12h |
| 3 | 1.2 | Créer Github | 1h | 2014-09-22 09:00 A | 2014-09-22 10:00 A |  | 100% |  |  |  |  |  | Mathew | 1h | 1h |
| 4 | 1.3 | Modèle base de donnée | 6h | 2014-09-22 09:00 A | 2014-09-25 11:00 A | 2 | 100% |  |  |  |  |  | Francis; Marc; Mathew | 13h | 13h |
| 5 | 1.4 | SEO | 4h | 2014-09-25 11:00 A | 2014-10-02 10:00 A | 4 | 100% |  |  |  |  |  | Francis | 4h | 4h |
| 6 | 1.5 | Shéma navigation | 5h | 2014-09-25 11:00 A | 2014-09-29 12:00 | 4 | 75% | 1.25h |  | 2.43d |  |  | Mathew; Francis | 10h | 7.5h |
| 7 | 1.6 | prototype HTML | 10h | 2014-09-29 12:00 A | 2014-10-09 10:00 A | 6 | 100% |  |  |  |  |  | Marc; Mathew | 20h | 20h |
| 8 | 2 | **Développment** | 4.14d | 2014-10-27 09:00 A | 2014-11-13 18:00 |  | 62% | 1.59d |  |  |  |  |  | 24.5h | 15.12h |
| 9 | 2.1 | Créer base de donnée | 1h | 2014-10-27 09:00 A | 2014-10-27 10:00 A | 1 | 100% |  |  |  |  |  | Marc | 1h | 1h |
| 10 | 2.2 | **Layout du site** | 4.14d | 2014-10-27 09:00 A | 2014-11-13 18:00 |  | 55% | 1.87d |  |  |  |  |  | 13h | 7.12h |
| 11 | 2.2.1 | Créer la master page | 4h | 2014-10-27 09:00 A | 2014-10-27 13:00 | 1 | 75% | 1h |  | 0.07d | 0d |  | Francis | 4h | 3h |
| 12 | 2.2.2 | Page info acheteur | 1.5h | 2014-10-30 10:00 A | 2014-10-30 11:30 | 11 | 75% | 0.38h |  | 2.5d |  |  | Francis | 1.5h | 1.12h |
| 13 | 2.2.3 | Page info compagnie | 1h | 2014-11-03 09:00 | 2014-11-03 10:00 | 11 |  |  |  | 12.14d |  | start no earlier than 2014-11-03 09:00 | Francis | 1h |  |
| 14 | 2.2.4 | Page du panier | 1.5h | 2014-11-03 09:00 A | 2014-11-03 10:30 A | 11 | 100% |  |  |  |  | start no earlier than 2014-11-03 09:00 | Marc | 1.5h | 1.5h |
| 15 | 2.2.5 | Page de confirmation d'achat | 1.5h | 2014-10-30 09:00 | 2014-10-30 10:30 | 11 |  |  |  | 2.64d |  |  | Mathew | 1.5h |  |
| 16 | 2.2.6 | Page de suivit des commandes | 1.5h | 2014-10-30 09:00 | 2014-10-30 10:30 | 11 |  |  |  | 2.64d |  |  | Mathew | 1.5h |  |
| 17 | 2.2.7 | Page de produits | 1h | 2014-11-03 10:30 A | 2014-11-03 11:30 A | 11 | 100% |  |  |  |  | start no earlier than 2014-11-03 09:00 | Marc | 1h | 1h |
| 18 | 2.2.8 | Page admin | 1h | 2014-10-30 09:00 A | 2014-10-30 10:00 | 11 | 50% | 0.5h |  | 1.11d | 1d |  | Marc | 1h | 0.5h |
| 19 | 2.3 | **Développement du backend** | 3.57d | 2014-10-30 09:00 | 2014-11-13 18:00 |  | 67% | 1.19d | 2014-11-03 09:00 |  |  |  |  | 10.5h | 7h |
| 20 | 2.3.1 | Inscription au site | 1h | 2014-11-03 09:00 A | 2014-11-03 10:00 A | 11 | 100% |  |  |  |  | start no earlier than 2014-11-03 09:00 | Marc | 1h | 1h |
| 21 | 2.3.2 | Modification info Acheteur | 1h | 2014-11-03 09:00 A | 2014-11-03 10:00 A | 12 | 100% |  |  |  |  | start no earlier than 2014-11-03 09:00 | Francis | 1h | 1h |
| 22 | 2.3.3 | Panier | 2h | 2014-11-03 11:30 A | 2014-11-06 09:30 A | 17 | 100% |  |  |  |  |  | Marc | 2h | 2h |
| 23 | 2.3.4 | Estimé livraison | 1.5h | 2014-11-06 09:30 | 2014-11-06 11:00 | 22 |  |  |  | 1.43d |  |  | Francis | 1.5h |  |
| 24 | 2.3.5 | Mode de paiement | 2h | 2014-11-06 09:30 A | 2014-11-06 11:30 A | 22 | 100% |  |  |  |  |  | Mathew | 2h | 2h |
| 25 | 2.3.6 | Suivit de commandes | 2h | 2014-11-06 11:30 | 2014-11-10 09:30 | 24 |  |  |  | 1.07d |  |  | Mathew | 2h |  |
| 26 | 2.3.7 | Interface Admin | 1h | 2014-11-06 09:00 A | 2014-11-06 10:00 A | 18 | 100% |  |  |  |  | start no earlier than 2014-11-06 09:00 | Marc | 1h | 1h |

| ID | WBS | Task | Duration | Start | Finish | Total slack |
| --- | --- | --- | --- | --- | --- | --- |
| 27 | 3 | **BIDON** | 0.29d | 2015-01-15 09:00 | 2015-01-15 11:00 |  |
| 28 | 3.1 | Valider la sécurité | 2h | 2015-01-15 09:00 | 2015-01-15 11:00 | 0d |
| 29 | 3.2 | Envoyer un couriel | 2h | 2015-01-15 09:00 | 2015-01-15 11:00 | 0d |
| 30 | 3.3 | implémentation IIS | 2h | 2015-01-15 09:00 | 2015-01-15 11:00 | 0d |
| 31 | 3.4 | Plan de tests | 2h | 2015-01-15 09:00 | 2015-01-15 11:00 | 0d |
